# caintegrator_project_plan_v3

Schedule from MS Project, 2011-08-01 to 2012-08-09, A marks actual dates.
NIH\NCI

## Calendars

- Standard: Mon-Fri 08:00-12:00, 13:00-17:00; Sat-Sun off. Exceptions (off unless hours are given): 2011-09-05, 2011-11-11, 2011-11-24 to 2011-11-25, 2011-12-26 to 2012-01-02, 2012-02-20.

## Resources

| Resource |
| --- |
| JP |
| TBH |
| SJ/JP |
| Qut |
| Quy |
| SJ |
| HS |
| Systems |
| MAX |
| system |
| Secuirity Team |
| Coung/Systems |
| will |
| 45 |
| Andy |
| WF |
| ALL |
| Santosh |
| TBD |
| UPT team |
| UCSF |
| caArray |
| JH |
| systens |
| ABE |

## Schedule

| ID | WBS | Task | Type | Duration | Start | Finish | Predecessors | Complete | Constraint | Resources | Work | Actual work |
| --- | --- | --- | --- | --- | --- | --- | --- | --- | --- | --- | --- | --- |
| 1 | 1 | **Adhoc Generic Support** |  | 16d | 2011-08-01 A | 2011-08-22 A |  | 100% |  |  |  |  |
| 2 | 1.1 | TCGA Data Support |  | 2d | 2011-08-01 A | 2011-08-02 A |  | 100% |  |  |  |  |
| 3 | 1.2 | TCGA Data on caIntegrator |  | 4d | 2011-08-17 A | 2011-08-22 A |  | 100% | start no earlier than 2011-08-17 |  |  |  |
| 4 | 1.3 | MATKC Support | milestone | 0d | 2011-08-01 A | 2011-08-01 A |  | 100% |  |  |  |  |
| 5 | 2 | **CaIntegrator Version 1.3.1** |  | 73d? | 2011-08-15 A | 2011-11-29 A |  | 100% |  |  | 718.86h | 718.86h |
| 6 | 2.1 | **JIRA CAINT-1011 508 Compliance** |  | 13d | 2011-08-15 A | 2011-08-31 A |  | 100% |  |  | 56h | 56h |
| 7 | 2.1.1 | Common Accenture Profile Dev/QA |  | 1d | 2011-08-15 A | 2011-08-15 A |  | 100% | start no earlier than 2011-08-15 | Quy | 8h | 8h |
| 8 | 2.1.2 | Identify 508 issues to be fixed and create JIRA user story tasks for each on DEV and QA. |  | 3d | 2011-08-22 A | 2011-08-24 A | 7 | 100% |  | JP | 24h | 24h |
| 9 | 2.1.3 | Fix TABLE tag in caBIO search form. |  | 0.5d | 2011-08-29 A | 2011-08-29 A | 8 | 100% |  | JP | 4h | 4h |
| 10 | 2.1.4 | Fix TABLE tag in gene list search form. |  | 0.5d | 2011-08-29 A | 2011-08-29 A | 9 | 100% |  | JP | 4h | 4h |
| 11 | 2.1.5 | Fix ALT tags in caBIO search form |  | 0.5d | 2011-08-30 A | 2011-08-30 A | 10 | 100% |  | JP | 4h | 4h |
| 12 | 2.1.6 | Fix ALT tags in study summary page |  | 0.5d | 2011-08-30 A | 2011-08-30 A | 11 | 100% |  | JP | 4h | 4h |
| 13 | 2.1.7 | Fix TABLE header in registeration page |  | 0.5d | 2011-08-31 A | 2011-08-31 A | 12 | 100% |  | JP | 4h | 4h |
| 14 | 2.1.8 | Fix TABLE in study summary page. |  | 0.5d | 2011-08-31 A | 2011-08-31 A | 13 | 100% |  | JP | 4h | 4h |
| 15 | 2.2 | **Ongoing maintenance and bug fixes** |  | 18d? | 2011-08-31 A | 2011-09-26 A |  | 100% |  |  | 64h | 64h |
| 16 | 2.2.1 | ADF platform issues |  | 2d | 2011-08-31 A | 2011-09-01 A |  | 100% | start no earlier than 2011-08-31 | JP | 16h | 16h |
| 17 | 2.2.2 | ECAT Prep |  | 2d | 2011-09-02 A | 2011-09-06 A | 16 | 100% |  | SJ; JP | 32h | 32h |
| 18 | 2.2.3 | prepare a point release for section 508 compliance. |  | 2d | 2011-09-19 A | 2011-09-20 A |  | 100% | start no earlier than 2011-09-19 | JP | 16h | 16h |
| 19 | 2.2.4 | Bug fix for typo error and new tag (RC2) |  | 1d? | 2011-09-26 A | 2011-09-26 A |  | 100% |  |  |  |  |
| 20 | 2.3 | QA RC1 |  | 7d | 2011-09-21 A | 2011-09-29 A | 18 | 100% |  | HS | 56h | 56h |
| 21 | 2.4 | **JIRA-CAINT-1047 - Resolve Appscan Issues** |  | 26d | 2011-09-30 A | 2011-11-04 A |  | 100% |  | HS | 424h | 424h |
| 22 | 2.4.1 | Resolve existing medium issues |  | 2d | 2011-09-30 A | 2011-10-03 A | 20 | 100% |  | JP | 16h | 16h |
| 23 | 2.4.2 | Run Appscan |  | 1d | 2011-10-03 A | 2011-10-03 A |  | 100% | start no earlier than 2011-10-03 | Secuirity Team | 8h | 8h |
| 24 | 2.4.3 | Fix medium issues |  | 7d | 2011-10-04 A | 2011-10-12 A | 23 | 100% |  | JP | 56h | 56h |
| 25 | 2.4.4 | Run new Appscan to verify |  | 1d | 2011-10-13 A | 2011-10-13 A | 24 | 100% |  | JP | 8h | 8h |
| 26 | 2.4.5 | Fix all additional medium issues |  | 9d | 2011-10-14 A | 2011-10-26 A | 25 | 100% |  | JP | 72h | 72h |
| 27 | 2.4.6 | Run new Appscan to verify |  | 1d | 2011-10-27 A | 2011-10-27 A | 26 | 100% |  | Systems | 8h | 8h |
| 28 | 2.4.7 | Fix issues from Appscan |  | 2d | 2011-10-28 A | 2011-10-31 A | 27 | 100% |  | JP | 16h | 16h |
| 29 | 2.4.8 | Full Appscan to verify |  | 1d | 2011-11-01 A | 2011-11-01 A | 28 | 100% |  | Systems | 8h | 8h |
| 30 | 2.4.9 | JIRA-CAINT-1066 - Bug fix (Ajax token missing) |  | 2d | 2011-11-02 A | 2011-11-03 A | 29 | 100% |  | JP | 16h | 16h |
| 31 | 2.4.10 | New tag (RC4) for 1.3.1 |  | 1d | 2011-11-04 A | 2011-11-04 A | 30 | 100% |  | JP | 8h | 8h |
| 32 | 2.5 | QA RC4 |  | 6d | 2011-11-07 A | 2011-11-15 A | 21 | 100% |  | HS [114.3%] | 54.86h | 54.86h |
| 33 | 2.6 | Release - Stage/QA/Appscan/Prod/QA |  | 8d | 2011-11-16 A | 2011-11-29 A | 32 | 100% |  | Systems | 64h | 64h |

| ID | WBS | Task | Duration | Start | Finish | Predecessors | Complete | Remaining | Total slack | Constraint | Resources | Work | Actual work |
| --- | --- | --- | --- | --- | --- | --- | --- | --- | --- | --- | --- | --- | --- |
| 34 | 3 | **CaIntegrator Version 1.4** | 257.4d? | 2011-08-01 A | 2012-08-09 |  | 51% | 127.28d? | 0d |  |  | 3880h | 1937.6h |
| 35 | 3.1 | Version 1.4 planning/priortization | 2d | 2011-08-01 A | 2011-08-02 A |  | 100% |  |  |  |  |  |  |
| 36 | 3.2 | **JIRA CAINT-1015 Tech Stack Upgrade** | 119d | 2011-08-03 A | 2012-01-30 A | 35 | 100% |  |  |  |  | 760h | 760h |
| 37 | 3.2.1 | Planning | 2d | 2011-08-03 A | 2011-08-04 A |  | 100% |  |  |  | JP | 16h | 16h |
| 38 | 3.2.2 | CI to Jenkins | 2d | 2011-09-07 A | 2011-09-08 A | 37, 52 | 100% |  |  |  | JP | 16h | 16h |
| 39 | 3.2.3 | ANT 1.8 | 3d | 2011-09-09 A | 2011-09-13 A | 38 | 100% |  |  |  | JP | 24h | 24h |
| 40 | 3.2.4 | Support for Version 1.3.1 RC1 | 2d | 2011-09-20 A | 2011-09-21 A | 18 | 100% |  |  |  | JP | 16h | 16h |
| 41 | 3.2.5 | JIRA CAINT-1055 Migration from nexus | 9d | 2011-10-06 A | 2011-10-18 A | 39 | 100% |  |  |  | MAX | 72h | 72h |
| 42 | 3.2.6 | JIRA CAINT-1058 Implement Artifact Configuration | 9d | 2011-10-26 A | 2011-11-07 A | 41 | 100% |  |  |  | MAX | 72h | 72h |
| 43 | 3.2.7 | JIRA CAINT-(1065,1070) Bugs, JBOSS vulnerability and resolve, IE issue | 14d | 2011-11-07 A | 2011-11-29 A | 31 | 100% |  |  |  | JP | 112h | 112h |
| 44 | 3.2.8 | JIRA CAINT-(1059,1012) PTE form, JBOSS upgrade | 8d | 2011-11-08 A | 2011-11-18 A | 42 | 100% |  |  |  | MAX | 64h | 64h |
| 45 | 3.2.9 | JIRA CAINT(1060,1061, 1010) build track setup Anthill Pro 3, Jenkins CI, Test | 27d | 2011-11-21 A | 2012-01-06 A | 44 | 100% |  |  |  | MAX | 216h | 216h |
| 46 | 3.2.10 | Debug and Test AHP3.0 | 3d | 2012-01-06 A | 2012-01-11 A | 45 | 100% |  |  |  | ALL | 24h | 24h |
| 47 | 3.2.11 | JIRA CAINT(1086) caIntegrator caArray compatibiity. | 4d | 2012-01-06 A | 2012-01-12 A | 45 | 100% |  |  |  | MAX | 32h | 32h |
| 48 | 3.2.12 | JIRA CAINT(1085) Phase -1 Add UPT deployment config and instructions to the DEV/QA/tiers PTE. | 3d | 2012-01-11 A | 2012-01-13 A | 45 | 100% |  |  |  | JP | 24h | 24h |
| 49 | 3.2.13 | Tech Stack upgrade to QA | 9d | 2012-01-13 A | 2012-01-25 A |  | 100% |  |  | start no earlier than 2012-01-13 | Systems | 72h | 72h |
| 50 | 3.2.14 | Fix the issues with tech stack upgrade on QA | 3d | 2012-01-26 A | 2012-01-30 A | 49 | 100% |  |  |  |  |  |  |
| 51 | 3.3 | **Ongoing maintenance and bug fixes** | 125d? | 2011-08-02 A | 2012-02-06 A |  | 100% |  |  |  |  | 304h | 304h |
| 52 | 3.3.1 | ADF platform issues | 2d | 2011-08-31 A | 2011-09-01 A |  | 100% |  |  | start no earlier than 2011-08-31 | JP | 16h | 16h |
| 53 | 3.3.2 | Data issues with training tier | 3d | 2011-09-23 A | 2011-09-27 A |  | 100% |  |  | start no earlier than 2011-09-23 | JP | 24h | 24h |
| 54 | 3.3.3 | Xenoline Requirements Gathering | 10d | 2011-11-07 A | 2011-11-21 A |  | 100% |  |  | start no earlier than 2011-11-07 | SJ | 80h | 80h |
| 55 | 3.3.4 | caDSR requirements for caIntegrator (Meeting with Denise) | 3d | 2011-12-14 A | 2011-12-16 A |  | 100% |  |  | start no earlier than 2011-12-14 | SJ | 24h | 24h |
| 56 | 3.3.5 | JIRA CAINT-1075 Error on copyNumber data deployments | 3d | 2011-11-30 A | 2011-12-02 A | 43 | 100% |  |  |  | JP | 24h | 24h |
| 57 | 3.3.6 | JIRA CAINT-986 Integration with IGV 2.0 | 3d | 2011-12-05 A | 2011-12-07 A | 56 | 100% |  |  |  | JP | 24h | 24h |
| 58 | 3.3.7 | JIRA CAINT-1083 BioPortals Tiger Team requirements. | 4d | 2011-12-21 A | 2012-01-03 A |  | 100% |  |  | start no earlier than 2011-12-21 | JP | 32h | 32h |
| 59 | 3.3.8 | JIRA CAINT-1081 Agilent 44K deployment | 4d | 2012-01-04 A | 2012-01-09 A | 58 | 100% |  |  |  | JP | 32h | 32h |
| 60 | 3.3.9 | Feasibility of patch release to Prod (Bioportal team feedback) | 1d? | 2011-08-02 A | 2011-08-02 A |  | 100% |  |  | start no earlier than 2011-08-02 | SJ | 8h | 8h |
| 61 | 3.3.10 | JIRA CAINT-964 - Not able to view IGV when not logged in | 3d | 2012-01-16 A | 2012-01-18 A | 48 | 100% |  |  |  | JP | 24h | 24h |
| 62 | 3.3.11 | MATKC Support | 2d | 2012-02-03 A | 2012-02-06 A |  | 100% |  |  | start no earlier than 2012-02-03 | JP | 16h | 16h |

| ID | WBS | Task | Duration | Start | Finish | Predecessors | Complete | Remaining | Total slack | Free slack | Constraint | Resources | Work | Actual work |
| --- | --- | --- | --- | --- | --- | --- | --- | --- | --- | --- | --- | --- | --- | --- |
| 63 | 3.4 | **TRANSCEND Feature implementation** | 156.4d? | 2011-10-25 A | 2012-06-13 |  | 45% | 85.83d? | 0d |  |  |  | 1944h | 873.6h |
| 64 | 3.4.1 | Refine requirements for permission model | 3d | 2011-10-25 A | 2011-10-27 A |  | 100% |  |  |  | start no earlier than 2011-10-25 | SJ | 24h | 24h |
| 65 | 3.4.2 | Create wireframe for permission model | 2d | 2011-10-28 A | 2011-10-31 A | 64 | 100% |  |  |  |  | Andy | 16h | 16h |
| 66 | 3.4.3 | Demo (internal team) wireframe for permission model | 1d? | 2011-11-01 A | 2011-11-01 A | 65 | 100% |  |  |  |  | WF | 8h | 8h |
| 67 | 3.4.4 | Discussion to finalize the requirements with TRANSCEND (for permissions) | 6d | 2011-11-02 A | 2011-11-09 A | 66 | 100% |  |  |  |  | SJ | 48h | 48h |
| 68 | 3.4.5 | Finalize Archive User Stories | 6d | 2011-11-22 A | 2011-12-01 A |  | 100% |  |  |  | start no earlier than 2011-11-22 | SJ | 48h | 48h |
| 69 | 3.4.6 | Permission Model - discussion and documentation | 3d | 2011-12-08 A | 2011-12-12 A |  | 100% |  |  |  | start no earlier than 2011-12-08 | JP | 24h | 24h |
| 70 | 3.4.7 | JIRA CAINT-1078 TRANSCEND - authorization user story CSM investigation | 7d | 2011-12-13 A | 2011-12-21 A | 57, 69 | 100% |  |  |  |  | JP | 56h | 56h |
| 71 | 3.4.8 | caArray/caIntegrator permission Architecure review | 3d? | 2011-12-19 A | 2011-12-21 A |  | 100% |  |  |  | start no earlier than 2011-12-19 | ALL | 24h | 24h |
| 72 | 3.4.9 | Create sample studies on caIntegrator | 3d | 2012-01-03 A | 2012-01-05 A | 71 | 100% |  |  |  | start no earlier than 2012-01-03 | SJ | 24h | 24h |
| 73 | 3.4.10 | **Version Control and Archive** | 34d | 2012-01-12 A | 2012-03-01 |  | 89% | 3.86d | 74d |  |  |  | 352h | 312h |
| 74 | 3.4.10.1 | JIRA CAINT-1023 -Version control (create shell study) | 11d | 2012-01-12 A | 2012-01-27 A | 47 | 100% |  |  |  |  | MAX | 88h | 88h |
| 75 | 3.4.10.2 | JIRA CAINT - 1098 (1023 Bug) | 7d | 2012-01-27 A | 2012-02-07 A | 74 | 100% |  |  |  |  | MAX | 56h | 56h |
| 76 | 3.4.10.3 | JIRA CAINT-1024 Version control (Archive) | 11d | 2012-02-07 A | 2012-02-23 A | 75 | 100% |  |  |  |  | MAX | 88h | 88h |
| 77 | 3.4.10.4 | Documentation for Version Control & Archive | 5d | 2012-02-23 | 2012-03-01 | 76 |  |  | 63.6d |  |  | JH | 40h |  |
| 78 | 3.4.10.5 | QA - Version Control & Archive | 5d | 2012-02-21 A | 2012-02-28 A | 76 | 100% |  |  |  |  | HS | 40h | 40h |
| 79 | 3.4.10.6 | Demo forVersion Control and Archive | 5d | 2012-02-23 A | 2012-03-01 A | 76 | 100% |  |  |  |  | UCSF | 40h | 40h |
| 80 | 3.4.11 | Finalize Architecture for permission model | 1d? | 2012-02-01 A | 2012-02-01 A |  | 100% |  |  |  | start no earlier than 2012-02-01 | Santosh | 8h | 8h |
| 81 | 3.4.12 | **Permission and Role base security** | 83d | 2012-02-02 A | 2012-05-29 | 80 | 35% | 54.01d | 10.4d |  |  |  | 600h | 209.6h |
| 82 | 3.4.12.1 | JIRA CAINT-1078 TRANSCEND - authorization user story CSM investigation | 5d | 2012-02-02 A | 2012-02-08 A | 48 | 100% |  |  |  |  | JP | 40h | 40h |
| 83 | 3.4.12.2 | **JIRA CAINT-1101 - Implementation:Role based security in caIntegrator to support TRANSCEND** | 73d | 2012-02-09 A | 2012-05-22 |  | 37% | 45.85d | 10.4d | 0d |  |  | 456h | 169.6h |
| 84 | 3.4.12.2.1 | JIRA CAINT-1103 Break down tasks and cleanup user story | 2d | 2012-02-09 A | 2012-02-10 A | 82 | 100% |  |  |  |  | JP | 16h | 16h |
| 85 | 3.4.12.2.2 | JIRA CAINT-1104 Document the new architecture and update EA model. (3) | 6d | 2012-02-28 A | 2012-03-06 A | 84, 132, 133 | 100% |  |  |  |  | JP | 48h | 48h |
| 86 | 3.4.12.2.3 | JIRA CAINT-1105 Create new hibernate and db components as modeled. (5) | 9d | 2012-03-07 A | 2012-03-20 A | 85 | 100% |  |  |  |  | JP | 72h | 72h |
| 87 | 3.4.12.2.4 | JIRA CAINT-1106 Add the Authorized Elements Group to the CSM protected elements configuration. be sure csm api returns the authorized elements.(5) | 6d | 2012-03-21 A | 2012-03-28 | 86 | 70% | 1.8d | 15.4d | 0d |  | JP | 48h | 33.6h |
| 88 | 3.4.12.2.5 | JIRA CAINT-1107 Modify study management service to CRUD authorized elements.(8) | 8d | 2012-03-29 | 2012-04-16 | 87 |  |  | 10.4d | 0d |  | JP | 64h |  |
| 89 | 3.4.12.2.6 | JIRA CAINT-1108 Update Manage Query service to check permissions to see allowed items (columns, values, experiment IDs).(8) | 8d | 2012-04-17 | 2012-04-26 | 88 |  |  | 10.4d | 0d |  | JP | 64h |  |
| 90 | 3.4.12.2.7 | JIRA CAINT-1109 Update Perform Analysis service to check permissions to see allowed items (columns, values, experiment IDs).(8) | 9d | 2012-04-27 | 2012-05-09 | 89 |  |  | 10.4d | 0d |  | JP | 72h |  |
| 91 | 3.4.12.2.8 | JIRA CAINT-1110 Create action and jsp for new admin screen.(5) | 5d | 2012-05-10 | 2012-05-16 | 90 |  |  | 10.4d | 0d |  | JP | 40h |  |
| 92 | 3.4.12.2.9 | JIRA CAINT-1111 Update integration (nightly) tests to pass.(3) | 4d | 2012-05-17 | 2012-05-22 | 91 |  |  | 10.4d | 0d |  | JP | 32h |  |
| 93 | 3.4.12.3 | Sample Data Set from UCSF | 2d | 2012-02-21 | 2012-02-22 |  |  |  | 69d |  | start no earlier than 2012-02-20 | UCSF | 16h |  |
| 94 | 3.4.12.4 | Documentation for Role Based Security | 5d | 2012-05-23 | 2012-05-29 | 83 |  |  | 10.4d |  |  | JH | 40h |  |
| 95 | 3.4.12.5 | QA - Permission and Role based security | 5d | 2012-05-23 | 2012-05-29 | 83 |  |  | 10.4d |  |  | HS | 40h |  |
| 96 | 3.4.12.6 | UAT for role based security | 1d | 2012-05-23 | 2012-05-23 | 83 |  |  | 4d |  |  | UCSF | 8h |  |

| ID | WBS | Task | Duration | Start | Finish | Predecessors | Complete | Remaining | Total slack | Constraint | Resources | Work | Actual work |
| --- | --- | --- | --- | --- | --- | --- | --- | --- | --- | --- | --- | --- | --- |
| 97 | 3.4.13 | **Automatic Refresh with caArray** | 59d? | 2012-02-23 A | 2012-05-16 |  | 15% | 50d? | 20d |  |  | 320h | 72h |
| 98 | 3.4.13.1 | **JIRA CAINT-1094 - Implementation: Automatic Refresh with caArray** | 55d | 2012-02-23 A | 2012-05-10 |  | 18% | 45.29d | 0d |  |  | 256h | 72h |
| 99 | 3.4.13.1.1 | Confirm user story with Transcend UCSF and caArray (may need balsamiq mockup) (3) | 3d | 2012-02-23 A | 2012-03-05 A | 76 | 100% |  |  |  | MAX | 24h | 24h |
| 100 | 3.4.13.1.2 | Confirm existing api supports necessary querying of sample data. (may be some additional coding to confirm this)(3) | 3d | 2012-03-05 A | 2012-03-08 A | 99 | 100% |  |  |  | MAX | 24h | 24h |
| 101 | 3.4.13.1.3 | Update model to have new flag on study configuration and new flag on abstractgenomicdatasource configuration.(2) | 3d | 2012-03-08 A | 2012-03-13 A | 100 | 100% |  |  |  | MAX | 24h | 24h |
| 102 | 3.4.13.1.4 | On Hold until for new developer | 19d | 2012-03-13 | 2012-04-09 | 101 |  |  | 0d |  |  |  |  |
| 103 | 3.4.13.1.5 | Create method (or asynch process) for querying caArray to get new data indicators for all experiments that the user has access to.(5) | 5d | 2012-04-09 | 2012-04-16 | 102 |  |  | 0d |  | ABE | 40h |  |
| 104 | 3.4.13.1.6 | Modify Manage Studies screen and action to read and display new data flag. (1) | 2d | 2012-04-16 | 2012-04-18 | 103 |  |  | 0d |  | ABE | 16h |  |
| 105 | 3.4.13.1.7 | Modify Edit Study screen and action to read and display genomic data source flag.(1) | 2d | 2012-04-18 | 2012-04-20 | 104 |  |  | 0d |  | ABE | 16h |  |
| 106 | 3.4.13.1.8 | Modify the Map Samples screen to query caArray for current samples and produce a UI to indicate what has added/removed. (8) | 8d | 2012-04-20 | 2012-05-02 | 105 |  |  | 0d |  | ABE | 64h |  |
| 107 | 3.4.13.1.9 | Modify the Map Samples screen and action to handle a new checkbox for Clear new data notification. (3) | 4d | 2012-05-02 | 2012-05-08 | 106 |  |  | 0d |  | ABE | 32h |  |
| 108 | 3.4.13.1.10 | Integrate and test with real caArray service.(3) | 2d | 2012-05-08 | 2012-05-10 | 107 |  |  | 0d |  | ABE | 16h |  |
| 109 | 3.4.13.2 | Documentation for Automatic Refresh | 4d | 2012-05-10 | 2012-05-16 | 98 |  |  | 20d |  | JH | 32h |  |
| 110 | 3.4.13.3 | QA - Automatic Refresh with caArray | 3d | 2012-05-10 | 2012-05-15 | 98 |  |  | 21d |  | HS | 24h |  |
| 111 | 3.4.13.4 | Demo for Automatic Refresh | 1d? | 2012-05-10 | 2012-05-11 | 98 |  |  | 23d |  | UCSF | 8h |  |
| 112 | 3.4.14 | **Single Sign-On (caArray and caIntegrator)** | 52.4d? | 2012-04-02 | 2012-06-13 |  |  |  | 0d |  |  | 392h |  |
| 113 | 3.4.14.1 | CBIIT Installation of CAS/open LDAP | 1d? | 2012-04-02 | 2012-04-02 |  |  |  | 51.4d | start no earlier than 2012-04-02 | system | 8h |  |
| 114 | 3.4.14.2 | **JIRA CAINT-1122 Single Sign-on** | 20d? | 2012-05-10 | 2012-06-07 |  |  |  | 0d |  | ABE | 320h |  |
| 115 | 3.4.14.2.1 | Verify CAS SSO server exists for us on the DEV tier, get uid and password to create credentials, learn user creation UI and setup users. (1) | 1d? | 2012-05-10 | 2012-05-11 | 98 |  |  | 0d |  | ABE | 8h |  |
| 116 | 3.4.14.2.2 | read and investigate installation options for CAS and decide if CAS is compatible with existing acegi credential lib. (3) | 4d | 2012-05-11 | 2012-05-17 | 115 |  |  | 0d |  | ABE | 32h |  |
| 117 | 3.4.14.2.3 | Add CAS libaries to local svn repo, modify web.xml to support CAS filters, be sure nothing breaks. (2) | 4d | 2012-05-17 | 2012-05-23 | 116 |  |  | 0d |  | ABE | 32h |  |
| 118 | 3.4.14.2.4 | modify cai authentication classes to remove or modify acegi.(5) | 5d | 2012-05-23 | 2012-05-30 | 117 |  |  | 0d |  | ABE | 40h |  |
| 119 | 3.4.14.2.5 | Confirm that caArray rmi API still works with a caArray installation modified for SSO. Verify that we can use caArray userids that were created in CAS. Handle any issues. (2) | 3d | 2012-05-30 | 2012-06-04 | 118 |  |  | 0d |  | ABE | 24h |  |
| 120 | 3.4.14.2.6 | Add CAS libraries to NEXUS and confirm functionality. Run CI build, NIGHTLY build. Run deployment to DEV tier. (1) | 3d | 2012-06-04 | 2012-06-07 | 119 |  |  | 0d |  | ABE | 24h |  |
| 121 | 3.4.14.3 | QA -Single Sign-On (caArray and caIntegrator) | 3d | 2012-06-07 | 2012-06-12 | 114 |  |  | 1d |  | ABE | 24h |  |
| 122 | 3.4.14.4 | Documentation for Single Sign-On | 4d | 2012-06-07 | 2012-06-13 | 114 |  |  | 0d |  | JH | 32h |  |
| 123 | 3.4.14.5 | Demo for Single Sign-On (caArray and caIntegrator) | 1d | 2012-06-07 | 2012-06-08 | 114 |  |  | 3d |  | UCSF | 8h |  |

| ID | WBS | Task | Duration | Start | Finish | Predecessors | Total slack | Free slack | Constraint | Resources | Work |
| --- | --- | --- | --- | --- | --- | --- | --- | --- | --- | --- | --- |
| 124 | 3.5 | **New Maintenance, Bugs, Tech Stack Upgrade & Performance** | 77d? | 2012-02-14 | 2012-05-31 |  | 49.4d |  |  |  | 400h |
| 125 | 3.5.1 | **Tech Stack Pending Work** | 77d? | 2012-02-14 | 2012-05-31 |  | 49.4d |  |  |  | 400h |
| 126 | 3.5.1.1 | UPT Upgrade to JBOSS 5.0 | 1d? | 2012-02-29 | 2012-02-29 |  | 108.4d | 59d | start no earlier than 2012-02-29 | UPT team | 8h |
| 127 | 3.5.1.2 | JIRA CAINT(1085) Phase -2 Add UPT deployment config and instructions to the DEV/QA/tiers PTE. | 3d | 2012-05-23 | 2012-05-25 | 92, 126 | 49.4d | 0d |  | JP | 24h |
| 128 | 3.5.1.3 | Test QA tier | 4d | 2012-05-28 | 2012-05-31 | 127 | 49.4d |  |  | HS | 32h |
| 129 | 3.5.1.4 | **Bug fixes** | 4d | 2012-05-28 | 2012-05-31 |  | 49.4d |  |  |  | 32h |
| 130 | 3.5.1.4.1 | JIRA CAINT-1091 Generating a KM plot from a study with 300 annotation columns causes an internal server error | 4d | 2012-05-28 | 2012-05-31 | 127 | 49.4d |  |  | JP | 32h |
| 131 | 3.5.1.5 | **Other Maintenance** | 21d? | 2012-02-14 | 2012-03-14 |  | 95.4d | 27d |  |  | 64h |
| 132 | 3.5.1.5.1 | MATKC Support | 4d | 2012-02-14 | 2012-02-21 |  | 111.4d |  | start no earlier than 2012-02-14 | JP | 32h |
| 133 | 3.5.1.5.2 | Other Ongoing Support - MAT-KC, Planning | 1d | 2012-02-29 | 2012-02-29 |  | 105.4d |  | start no earlier than 2012-02-29 | JP | 8h |
| 134 | 3.5.1.5.3 | IGV Disclaimer, other support | 1d? | 2012-03-09 | 2012-03-09 |  | 98.4d |  | start no earlier than 2012-03-09 | JP | 8h |
| 135 | 3.5.1.5.4 | caGrid upgrade analysis | 2d | 2012-03-13 | 2012-03-14 |  | 95.4d |  | start no earlier than 2012-03-13 | SJ | 16h |
| 136 | 3.5.1.6 | **Performance requirements** | 30d | 2012-03-26 | 2012-05-04 |  | 68.4d |  |  |  | 240h |
| 137 | 3.5.1.6.1 | Define Requirements | 10d | 2012-03-26 | 2012-04-06 |  | 68.4d | 0d | start no earlier than 2012-03-26 | SJ | 80h |
| 138 | 3.5.1.6.2 | Load Test and Verify | 10d | 2012-04-09 | 2012-04-20 | 137 | 68.4d | 0d |  | TBD | 80h |
| 139 | 3.5.1.6.3 | Fix any issues | 10d | 2012-04-23 | 2012-05-04 | 138, 131 | 68.4d |  |  | JP | 80h |
| 140 | 3.6 | **Release to Prod (1.4)** | 41d? | 2012-06-13 | 2012-08-09 |  | 0d |  |  |  | 472h |
| 141 | 3.6.1 | **Prep for Release** | 10d? | 2012-06-13 | 2012-06-27 |  | 0d |  |  |  | 176h |
| 142 | 3.6.1.1 | Appscan on Dev | 2d | 2012-06-13 | 2012-06-15 | 63 | 3d | 0d |  | Systems | 16h |
| 143 | 3.6.1.2 | Fix Any issues from Appscan | 5d | 2012-06-15 | 2012-06-22 | 142 | 3d |  |  | JP | 40h |
| 144 | 3.6.1.3 | 508 compliance check | 3d | 2012-06-15 | 2012-06-20 | 142 | 5d |  |  | MAX | 24h |
| 145 | 3.6.1.4 | Documentation Updates | 10d | 2012-06-13 | 2012-06-27 | 63 | 0d |  |  | JH | 80h |
| 146 | 3.6.1.5 | Prep: Announcements and other updates (landing page etc) | 1d | 2012-06-15 | 2012-06-18 | 142 | 7d |  |  | SJ | 8h |
| 147 | 3.6.1.6 | Release Notes | 1d? | 2012-06-15 | 2012-06-18 | 142 | 7d |  |  | SJ | 8h |
| 148 | 3.6.2 | Integration Test | 10d | 2012-06-27 | 2012-07-11 | 141 | 0d |  |  | HS | 80h |

| ID | WBS | Task | Duration | Start | Finish | Predecessors | Total slack | Resources | Work |
| --- | --- | --- | --- | --- | --- | --- | --- | --- | --- |
| 149 | 3.6.3 | **RC1** | 7d | 2012-07-11 | 2012-07-20 | 148 | 0d |  | 80h |
| 150 | 3.6.3.1 | RC1 to Stage | 4d | 2012-07-11 | 2012-07-17 | 148 | 0d | Systems | 32h |
| 151 | 3.6.3.2 | QA | 3d | 2012-07-17 | 2012-07-20 | 150 | 0d | HS | 24h |
| 152 | 3.6.3.3 | Appscan | 3d | 2012-07-11 | 2012-07-16 | 148 | 18d | Systems | 24h |
| 153 | 3.6.4 | **RC2** | 11d | 2012-07-20 | 2012-08-06 |  | 0d |  | 112h |
| 154 | 3.6.4.1 | Fix any Issue | 5d | 2012-07-20 | 2012-07-27 | 151 | 0d | JP | 40h |
| 155 | 3.6.4.2 | RC2 to Stage | 3d | 2012-07-27 | 2012-08-01 | 154 | 0d | Systems | 24h |
| 156 | 3.6.4.3 | QA | 3d | 2012-08-01 | 2012-08-06 | 155 | 0d | HS | 24h |
| 157 | 3.6.4.4 | Appscan | 3d | 2012-08-01 | 2012-08-06 | 155 | 0d | Systems | 24h |
| 158 | 3.6.5 | Prod Release/Final UAT for TRANSCEND | 3d | 2012-08-06 | 2012-08-09 | 153 | 0d | Systems | 24h |
| 159 | 4 | NOT INCLUDED (Generic Platform, NBIA , Performance eval) | 1d? | 2011-08-01 | 2011-08-01 |  | 256.4d |  |  |
